# Fabrica_ascensores

Schedule from ProjectLibre, 2025-06-09 to 2025-08-06.

## Calendars

- Estandar: Mon-Fri 08:00-12:00, 13:00-17:00; Sat-Sun off.

## Resources

| Resource | Rate |
| --- | --- |
| No Asignado |  |
| Cuadrilla Albañilería 1 | 60 |
| Pareja fontanería | 50 |
| Cuadrilla Alicatados y baldosas | 75 |
| Cuadrilla suelos epoxicos | 60 |
| Cuadrilla albañileria 2 | 60 |
| Pareja Vidrieros | 40 |
| Grupo albañilería 3 | 60 |
| Pareja electricistas | 40 |

## Schedule

| ID | WBS | Task | Duration | Start | Finish | Predecessors | Constraint | Resources |
| --- | --- | --- | --- | --- | --- | --- | --- | --- |
| 1 | 1 | **Solados y pavimentos** | 19d | 2025-06-09 | 2025-07-03 |  | start no earlier than 2025-06-09 |  |
| 2 | 1.1 | solado cemento | 5d | 2025-06-09 | 2025-06-13 |  |  | Cuadrilla Albañilería 1 |
| 3 | 1.2 | Pavimento mortero epoxy | 7d | 2025-06-20 | 2025-06-30 | 2FS+4d |  | Cuadrilla suelos epoxicos |
| 4 | 1.3 | solado de gres | 10d | 2025-06-20 | 2025-07-03 | 2FS+4d | start no earlier than 2025-05-09 | Cuadrilla Alicatados y baldosas |
| 5 | 2 | **Fachada** | 22d | 2025-06-16 | 2025-07-15 |  |  |  |
| 6 | 2.1 | Bloque hormigon cerramiento | 15d | 2025-06-16 | 2025-07-04 | 2 |  | Cuadrilla Albañilería 1 |
| 7 | 2.2 | Colocación piedra fachada | 3d | 2025-07-09 | 2025-07-11 | 6, 8 |  | Cuadrilla Albañilería 1 |
| 8 | 2.3 | Enfoscado hormigon hidrófugo | 2d | 2025-07-07 | 2025-07-08 | 6 |  | Cuadrilla Albañilería 1 |
| 9 | 2.4 | Colocación aislamiento | 2d | 2025-07-14 | 2025-07-15 | 6, 7 |  | Cuadrilla Albañilería 1 |
| 10 | 3 | **cubiertas** | 10.5d | 2025-07-01 | 2025-07-15 |  |  |  |
| 11 | 3.1 | Fontanería | 1.5d | 2025-07-14 | 2025-07-15 | 8, 7 |  | Pareja fontanería |
| 12 | 3.2 | Cubierta con lucernario | 8d | 2025-07-01 | 2025-07-10 | 3 | start no earlier than 2025-05-26 | Cuadrilla albañileria 2 |
| 13 | 3.3 | Remate | 1.5d | 2025-07-11 | 2025-07-14 | 12 |  | Cuadrilla albañileria 2 |
| 14 | 4 | **Divisiones internas** | 16d | 2025-07-16 | 2025-08-06 |  |  |  |
| 15 | 4.1 | Tabique Ladrillo | 10d | 2025-07-16 | 2025-07-29 | 4, 9 |  | Cuadrilla Albañilería 1 |
| 16 | 4.2 | Falso techo | 6d | 2025-07-30 | 2025-08-06 | 15 |  | Cuadrilla Albañilería 1 |
| 17 | 4.3 | Instalación paneles vidrio | 1d | 2025-07-30 | 2025-07-30 | 15 |  | Pareja Vidrieros |
| 18 | 4.4 | Guarnecido y enlucido | 3d | 2025-07-31 | 2025-08-04 | 15, 17 |  | Cuadrilla albañileria 2 |
| 19 | 5 | **Baños y vestuarios** | 14d | 2025-07-01 | 2025-07-18 |  | start no earlier than 2025-05-07 |  |
| 20 | 5.1 | Colocación de tabique y tabicon | 3d | 2025-07-08 | 2025-07-10 | 25 |  |  |
| 21 | 5.2 | Alicatado azulejos | 2d | 2025-07-11 | 2025-07-14 | 20 |  | Cuadrilla Alicatados y baldosas |
| 22 | 5.3 | Guarnecido y enlucido yeso | 1.5d | 2025-07-16 | 2025-07-17 | 20, 26 |  | Grupo albañilería 3 |
| 23 | 5.4 | Instalacion de sanitarios y duchas | 1d | 2025-07-15 | 2025-07-15 | 21 |  | Pareja fontanería |
| 24 | 5.5 | Instalación de mamparas | 0.5d | 2025-07-16 | 2025-07-16 | 23 |  | Pareja Vidrieros |
| 25 | 5.6 | Colocación de solado de gres | 2d | 2025-07-04 | 2025-07-07 | 2, 4 |  | Cuadrilla Alicatados y baldosas |
| 26 | 5.7 | Instalación separadores formica | 1.5d | 2025-07-15 | 2025-07-16 | 20, 21 |  | Grupo albañilería 3 |
| 27 | 5.8 | Instalación termo eléctrico | 0.2d | 2025-07-16 | 2025-07-16 | 23 |  | Pareja fontanería |
| 28 | 5.9 | Instalación taquillas | 0.33d | 2025-07-01 | 2025-07-01 | 3 |  | Grupo albañilería 3 |
| 29 | 5.10 | Espejos | 0.2d | 2025-07-18 | 2025-07-18 | 22 |  | Pareja Vidrieros |
| 30 | 5.11 | Puertas | 0.5d | 2025-07-11 | 2025-07-11 | 20 |  | Grupo albañilería 3 |
| 31 | 5.12 | Pequeño mobiliario | 1d | 2025-07-18 | 2025-07-18 | 22 |  | Grupo albañilería 3 |

| ID | WBS | Task | Duration | Start | Finish | Predecessors | Resources |
| --- | --- | --- | --- | --- | --- | --- | --- |
| 32 | 6 | **Maquinaria** | 5d | 2025-07-01 | 2025-07-07 |  |  |
| 33 | 6.1 | Colocación de máquinas | 3d | 2025-07-01 | 2025-07-03 | 3 | Grupo albañilería 3 |
| 34 | 6.2 | Puesta a punto de máquinas | 2d | 2025-07-04 | 2025-07-07 | 33 | Pareja electricistas |
